# TT_ProjectSchedule

Schedule from MS Project, 2015-05-13 to 2015-08-26.
FPT

## Calendars

- Standard: Mon-Fri 08:00-12:00, 13:00-17:00; Sat-Sun off.

## Resources

| Resource |
| --- |
| DucHN |
| HaiDT |
| HoangNM |
| ThuyLM |
| LucPT |
| HieuTM |
| TEAM |
| DevTeam |
| DocTeam |
| TestTeam |

## Schedule

| ID | WBS | Task | Duration | Start | Finish | Predecessors | Total slack | Free slack | Resources | Work |
| --- | --- | --- | --- | --- | --- | --- | --- | --- | --- | --- |
| 1 | 1 | **Fly Away Plus** | 76d | 2015-05-13 | 2015-08-26 |  | 0d |  |  | 1548h |
| 2 | 1.1 | **Initiation** | 15d | 2015-05-13 | 2015-06-02 |  | 0d |  |  | 320h |
| 3 | 1.1.1 | **Form up** | 1d | 2015-05-13 | 2015-05-13 |  | 0d |  |  | 8h |
| 4 | 1.1.1.1 | Form up team roles | 0.5d | 2015-05-13 | 2015-05-13 |  | 0d |  | TEAM | 4h |
| 5 | 1.1.1.2 | Uniform idea meeting | 0.5d | 2015-05-13 | 2015-05-13 | 4 | 0d |  | TEAM | 4h |
| 6 | 1.1.2 | **Project Clarification** | 1.5d | 2015-05-13 | 2015-05-14 |  | 0d |  |  | 16h |
| 7 | 1.1.2.1 | Clarify project scope | 0.1d | 2015-05-14 | 2015-05-14 | 5 | 0d |  | TEAM | 0.8h |
| 8 | 1.1.2.2 | Clarify technical requirements | 0.1d | 2015-05-14 | 2015-05-14 | 7 | 0d |  | TEAM | 0.8h |
| 9 | 1.1.2.3 | Clarify rules in Team | 0.1d | 2015-05-14 | 2015-05-14 | 8 | 0d |  | TEAM | 0.8h |
| 10 | 1.1.2.4 | Clarify working environments | 0.1d | 2015-05-14 | 2015-05-14 | 9 | 0d |  | TEAM | 0.8h |
| 11 | 1.1.2.5 | Develop communications plan | 0.1d | 2015-05-14 | 2015-05-14 | 10 | 0d |  | DucHN | 0.8h |
| 12 | 1.1.2.6 | List project features | 0.5d | 2015-05-13 | 2015-05-13 |  | 0d |  | TEAM | 4h |
| 13 | 1.1.2.7 | Initiate Project structure | 0.5d | 2015-05-13 | 2015-05-13 | 12 | 0d |  | HaiDT | 4h |
| 14 | 1.1.2.8 | Create Coding conventions | 0.5d | 2015-05-14 | 2015-05-14 | 13 | 0d |  | HaiDT | 4h |
| 15 | 1.1.3 | **Environment** | 1.5d | 2015-05-14 | 2015-05-15 | 6 | 0d |  |  | 12h |
| 16 | 1.1.3.1 | Create guideline of installing and using environments | 0.5d | 2015-05-14 | 2015-05-14 | 12 | 0d |  | DucHN | 4h |
| 17 | 1.1.3.2 | Setup TortoiseGit | 1h | 2015-05-15 | 2015-05-15 | 16 | 0d |  | TEAM | 1h |
| 18 | 1.1.3.3 | Setup Visual Studio 2013 Ultimate | 3h | 2015-05-15 | 2015-05-15 | 17 | 0d |  | TEAM | 3h |
| 19 | 1.1.3.4 | Setup Microsoft SQL Server 2012 | 1h | 2015-05-15 | 2015-05-15 | 18 | 0d |  | TEAM | 1h |
| 20 | 1.1.3.5 | Training environments meeting | 3h | 2015-05-15 | 2015-05-15 | 19 | 0d |  | TEAM | 3h |
| 21 | 1.1.4 | **Technology research** | 9d | 2015-05-18 | 2015-05-28 | 15 | 3d |  |  | 96h |
| 22 | 1.1.4.1 | Research technologies to be used in project | 3d | 2015-05-18 | 2015-05-20 |  | 9d |  | HaiDT | 24h |
| 23 | 1.1.4.2 | Study .NET MVC5 | 4d | 2015-05-18 | 2015-05-21 |  | 3d | 0d | HoangNM | 32h |
| 24 | 1.1.4.3 | Study Bootstrap | 1d | 2015-05-22 | 2015-05-22 | 23 | 3d | 0d | HoangNM | 8h |
| 25 | 1.1.4.4 | Study Javascript, jQuery | 4d | 2015-05-25 | 2015-05-28 | 24 | 3d |  | HoangNM | 32h |

| ID | WBS | Task | Type | Duration | Start | Finish | Predecessors | Total slack | Free slack | Resources | Work |
| --- | --- | --- | --- | --- | --- | --- | --- | --- | --- | --- | --- |
| 26 | 1.1.5 | **Project Introduction** |  | 5.5d | 2015-05-18 | 2015-05-25 | 15 | 2.5d | 0d |  | 44h |
| 27 | 1.1.5.1 | Create "Project Introduction" document |  | 3d | 2015-05-18 | 2015-05-20 |  | 2.5d | 0d | DocTeam | 24h |
| 28 | 1.1.5.2 | Peer review "Project Introduction" document |  | 0.5d | 2015-05-21 | 2015-05-21 | 27 | 2.5d | 0d | DucHN | 4h |
| 29 | 1.1.5.3 | Update "Project Introduction" document draft |  | 1d | 2015-05-21 | 2015-05-22 | 28 | 2.5d | 0d | DocTeam | 8h |
| 30 | 1.1.5.4 | Update "Project Introduction" based on instructor's comments |  | 1d | 2015-05-22 | 2015-05-25 | 29 | 2.5d | 0d | DocTeam | 8h |
| 31 | 1.1.5.5 | Summit Project Introduction | milestone | 0d | 2015-05-25 | 2015-05-25 | 30 | 2.5d |  |  |  |
| 32 | 1.1.6 | Kick-off meeting |  | 0.5d | 2015-05-25 | 2015-05-25 | 26 | 6d |  | TEAM | 4h |
| 33 | 1.1.7 | **Q&A sheet** |  | 1.5d | 2015-05-25 | 2015-05-26 | 26 | 5d |  |  | 12h |
| 34 | 1.1.7.1 | Create Q&A |  | 0.5d | 2015-05-25 | 2015-05-25 |  | 5d | 0d | LucPT | 4h |
| 35 | 1.1.7.2 | Update Q&A sheet |  | 0.5d | 2015-05-26 | 2015-05-26 | 34 | 5d | 0d | LucPT | 4h |
| 36 | 1.1.7.3 | Translate Q&A sheet |  | 0.5d | 2015-05-26 | 2015-05-26 | 35 | 5d |  | LucPT | 4h |
| 37 | 1.1.8 | **Project Plan** |  | 12d | 2015-05-18 | 2015-06-02 | 15 | 0d |  |  | 96h |
| 38 | 1.1.8.1 | Develop project definition |  | 2d | 2015-05-18 | 2015-05-19 |  | 0d |  | DucHN | 16h |
| 39 | 1.1.8.2 | Create Project plan document |  | 1d | 2015-05-20 | 2015-05-20 | 38 | 0d |  | DucHN | 8h |
| 40 | 1.1.8.3 | Create Work BreakDown Structure |  | 3d | 2015-05-21 | 2015-05-25 | 39 | 0d |  | DucHN | 24h |
| 41 | 1.1.8.4 | Create Project schedule document |  | 3d | 2015-05-26 | 2015-05-28 | 40 | 0d |  | DucHN | 24h |
| 42 | 1.1.8.5 | Create CM Plan document |  | 0.5d | 2015-05-29 | 2015-05-29 | 41 | 0d |  | DucHN | 4h |
| 43 | 1.1.8.6 | Review & get comment of Project Plan |  | 0.5d | 2015-05-29 | 2015-05-29 | 42 | 0d |  | DucHN | 4h |
| 44 | 1.1.8.7 | Develop Risk Register |  | 0.5d | 2015-06-01 | 2015-06-01 | 43 | 1.5d |  | HieuTM | 4h |
| 45 | 1.1.8.8 | Update Project Plan documents (Schedule, Project Plan in MS Word, CM Plan) |  | 1d | 2015-06-01 | 2015-06-01 | 43 | 0d |  | DucHN | 8h |
| 46 | 1.1.8.9 | Create PP Review check list |  | 0.5d | 2015-06-02 | 2015-06-02 | 45 | 0d |  | ThuyLM | 4h |
| 47 | 1.1.8.10 | Summit Project Plan Final version | milestone | 0d | 2015-06-02 | 2015-06-02 | 46FS+0.5d | 0d |  |  |  |
| 48 | 1.1.9 | **Requirement** |  | 4d | 2015-05-25 | 2015-05-29 | 26 | 2.5d |  |  | 32h |
| 49 | 1.1.9.1 | **User Requirement** |  | 2d | 2015-05-25 | 2015-05-27 |  | 2.5d | 0d |  | 16h |
| 50 | 1.1.9.1.1 | Develop brief "User Requirements Specification" document |  | 1d | 2015-05-25 | 2015-05-26 |  | 2.5d | 0d | DocTeam | 8h |
| 51 | 1.1.9.1.2 | Peer review brief "User Requirements Specification" document |  | 0.5d | 2015-05-26 | 2015-05-26 | 50 | 2.5d | 0d | DocTeam | 4h |
| 52 | 1.1.9.1.3 | Update brief "User Requirements Specification" document |  | 0.5d | 2015-05-27 | 2015-05-27 | 51 | 2.5d |  | DocTeam | 4h |

| ID | WBS | Task | Type | Duration | Start | Finish | Predecessors | Total slack | Free slack | Resources | Work |
| --- | --- | --- | --- | --- | --- | --- | --- | --- | --- | --- | --- |
| 53 | 1.1.9.2 | **Mock-up screens** |  | 2d | 2015-05-27 | 2015-05-29 | 49 | 2.5d |  |  | 16h |
| 54 | 1.1.9.2.1 | Collect business requirements and processes |  | 0.5d | 2015-05-27 | 2015-05-27 |  | 2.5d | 0d | TEAM | 4h |
| 55 | 1.1.9.2.2 | Develop main features' mockup screens |  | 1d | 2015-05-28 | 2015-05-28 | 54 | 2.5d | 0d | DevTeam | 8h |
| 56 | 1.1.9.2.3 | Review and edit screen main features' mockup screens |  | 0.5d | 2015-05-29 | 2015-05-29 | 55 | 2.5d | 0d | DevTeam | 4h |
| 57 | 1.1.9.3 | Complete main features' mockup screens | milestone | 0d | 2015-05-29 | 2015-05-29 | 56 | 2.5d |  |  |  |
| 58 | 1.2 | **Solution** |  | 25d | 2015-06-03 | 2015-07-07 | 2 | 0d |  |  | 424h |
| 59 | 1.2.1 | **Sofware Requirement Specification** |  | 14d | 2015-06-03 | 2015-06-22 |  | 0d |  |  | 136h |
| 60 | 1.2.1.1 | **Non-functional Requirements Specification** |  | 1d | 2015-06-22 | 2015-06-22 | 72 | 11d |  |  |  |
| 61 | 1.2.1.1.1 | Develop User Interface requirements |  | 1d | 2015-06-22 | 2015-06-22 |  | 11d |  |  |  |
| 62 | 1.2.1.1.2 | Develop Performance requirements |  | 1d | 2015-06-22 | 2015-06-22 |  | 11d |  |  |  |
| 63 | 1.2.1.2 | **Functional Requirement Specification** |  | 13d | 2015-06-03 | 2015-06-19 |  | 0d |  |  | 136h |
| 64 | 1.2.1.2.1 | **Part 1** |  | 5d | 2015-06-03 | 2015-06-09 |  | 0d |  |  | 72h |
| 65 | 1.2.1.2.1.1 | Homepage Module |  | 2d | 2015-06-03 | 2015-06-04 |  | 3d |  | DucHN | 16h |
| 66 | 1.2.1.2.1.2 | User personal page Module |  | 1d | 2015-06-03 | 2015-06-03 |  | 0d |  | HoangNM | 8h |
| 67 | 1.2.1.2.1.3 | Admin Module |  | 1d | 2015-06-04 | 2015-06-04 | 66 | 3d |  | HaiDT | 8h |
| 68 | 1.2.1.2.1.4 | Search Module |  | 1d | 2015-06-04 | 2015-06-04 | 66 | 0d |  | DucHN | 8h |
| 69 | 1.2.1.2.1.5 | Login/Logout Module |  | 1d | 2015-06-05 | 2015-06-05 | 68 | 2d |  | HoangNM | 8h |
| 70 | 1.2.1.2.1.6 | Friend Module |  | 2d | 2015-06-05 | 2015-06-08 | 68 | 0d |  | HaiDT | 16h |
| 71 | 1.2.1.2.1.7 | Room module |  | 1d | 2015-06-09 | 2015-06-09 | 70 | 0d |  | DucHN | 8h |
| 72 | 1.2.1.2.2 | **Part 2** |  | 6d | 2015-06-12 | 2015-06-19 | 64FS+2d | 0d |  |  | 64h |
| 73 | 1.2.1.2.2.1 | Suggestion Module |  | 1d | 2015-06-12 | 2015-06-12 |  | 5d |  | HoangNM | 8h |
| 74 | 1.2.1.2.2.2 | Sharing Module |  | 1d | 2015-06-12 | 2015-06-12 |  | 0d |  | HaiDT | 8h |
| 75 | 1.2.1.2.2.3 | Report Module |  | 1d | 2015-06-15 | 2015-06-15 | 74 | 4d |  | DucHN | 8h |
| 76 | 1.2.1.2.2.4 | Planing Module |  | 3d | 2015-06-15 | 2015-06-17 | 74 | 0d |  | HoangNM | 24h |
| 77 | 1.2.1.2.2.5 | Chat module |  | 2d | 2015-06-18 | 2015-06-19 | 76 | 0d |  | HaiDT | 16h |

| ID | WBS | Task | Type | Duration | Start | Finish | Predecessors | Total slack | Free slack | Resources | Work |
| --- | --- | --- | --- | --- | --- | --- | --- | --- | --- | --- | --- |
| 78 | 1.2.2 | **System Architectural Design** |  | 5d | 2015-06-03 | 2015-06-09 |  | 8d | 0d |  | 32h |
| 79 | 1.2.2.1 | Define the system structure and unify system features |  | 2d | 2015-06-03 | 2015-06-04 |  | 8d | 0d | HaiDT | 16h |
| 80 | 1.2.2.2 | Study the common System Architetures |  | 1d | 2015-06-05 | 2015-06-05 | 79 | 8d | 0d | DucHN | 8h |
| 81 | 1.2.2.3 | Make choice of System Architeture |  | 1d | 2015-06-08 | 2015-06-08 | 80 | 8d | 0d | DevTeam | 8h |
| 82 | 1.2.2.4 | Complete Architecture Design version 1.0 | milestone | 0d | 2015-06-09 | 2015-06-09 | 81FS+1d | 8d |  |  |  |
| 83 | 1.2.3 | **Detailed Design** |  | 19d | 2015-06-11 | 2015-07-07 | 78 | 0d |  |  | 160h |
| 84 | 1.2.3.1 | **Database design** |  | 7d | 2015-06-22 | 2015-06-30 | 63 | 0d |  |  | 56h |
| 85 | 1.2.3.1.1 | Organize information to Database tables |  | 3d | 2015-06-22 | 2015-06-24 |  | 0d |  | HaiDT | 24h |
| 86 | 1.2.3.1.2 | Define tables' relationships |  | 1d | 2015-06-25 | 2015-06-25 | 85 | 0d |  | HaiDT | 8h |
| 87 | 1.2.3.1.3 | Apply normalization rules to Database design |  | 1d | 2015-06-26 | 2015-06-26 | 86 | 0d |  | DucHN | 8h |
| 88 | 1.2.3.1.4 | Refine Database design |  | 2d | 2015-06-29 | 2015-06-30 | 87 | 0d |  | HoangNM | 16h |
| 89 | 1.2.3.2 | Refine Database Design |  | 1d | 2015-07-01 | 2015-07-01 | 84 | 4d |  | DevTeam | 8h |
| 90 | 1.2.3.3 | **Screen design** |  | 3d | 2015-06-11 | 2015-06-15 |  | 11d |  |  | 24h |
| 91 | 1.2.3.3.1 | Create Screen Flow digram |  | 1d | 2015-06-11 | 2015-06-11 | 78FS+1d | 11d | 0d | ThuyLM | 8h |
| 92 | 1.2.3.3.2 | Create Screen Definition |  | 1d | 2015-06-12 | 2015-06-12 | 91 | 11d | 0d | HieuTM | 8h |
| 93 | 1.2.3.3.3 | Create Screen Design |  | 1d | 2015-06-15 | 2015-06-15 | 92 | 11d |  | LucPT | 8h |
| 94 | 1.2.3.4 | **Class/Component Design** |  | 5d | 2015-07-01 | 2015-07-07 | 90 | 0d |  |  | 72h |
| 95 | 1.2.3.4.1 | Create Data models |  | 1d | 2015-07-01 | 2015-07-01 | 84 | 0d |  | HaiDT | 8h |
| 96 | 1.2.3.4.2 | List components of the system |  | 1d | 2015-07-02 | 2015-07-02 | 95 | 0d |  | DucHN | 8h |
| 97 | 1.2.3.4.3 | Break modules into classes |  | 1d | 2015-07-03 | 2015-07-03 | 96 | 0d |  | DucHN | 8h |
| 98 | 1.2.3.4.4 | Create Class diagram |  | 2d | 2015-07-06 | 2015-07-07 | 97 | 0d |  | HaiDT | 16h |
| 99 | 1.2.3.4.5 | Create Class description document |  | 1d | 2015-07-06 | 2015-07-06 | 97 | 1d |  | HaiDT | 8h |
| 100 | 1.2.3.4.6 | Create Flow diagram |  | 1d | 2015-07-03 | 2015-07-03 | 96 | 0d |  | HoangNM | 8h |
| 101 | 1.2.3.4.7 | Create Progress Report 2 |  | 1d | 2015-07-06 | 2015-07-06 | 100 | 0d |  | DucHN | 8h |
| 102 | 1.2.3.4.8 | Create Design review checklists |  | 1d | 2015-07-07 | 2015-07-07 | 101 | 0d |  | ThuyLM | 8h |

| ID | WBS | Task | Type | Duration | Start | Finish | Predecessors | Total slack | Free slack | Resources | Work |
| --- | --- | --- | --- | --- | --- | --- | --- | --- | --- | --- | --- |
| 103 | 1.2.4 | **Project Management** |  | 2d | 2015-06-10 | 2015-06-11 | 78 | 18d |  |  | 40h |
| 104 | 1.2.4.1 | Update project plan |  | 2d | 2015-06-10 | 2015-06-11 |  | 18d |  | DucHN | 16h |
| 105 | 1.2.4.2 | Coding Center Helper Page |  | 2d | 2015-06-10 | 2015-06-11 |  | 18d |  | DucHN | 16h |
| 106 | 1.2.4.3 | Coding Login with Facebook and Google+ feature |  | 1d | 2015-06-10 | 2015-06-10 |  | 19d |  | HaiDT | 8h |
| 107 | 1.2.5 | **Test** |  | 7d | 2015-06-03 | 2015-06-11 |  | 18d |  |  | 56h |
| 108 | 1.2.5.1 | Create Test plan |  | 3d | 2015-06-03 | 2015-06-05 |  | 18d | 0d | ThuyLM | 24h |
| 109 | 1.2.5.2 | Review + Update Test plan |  | 1d | 2015-06-08 | 2015-06-08 | 108 | 18d | 0d | LucPT | 8h |
| 110 | 1.2.5.3 | Test plan approved | milestone | 0d | 2015-06-08 | 2015-06-08 | 109 | 18d | 0d |  |  |
| 111 | 1.2.5.4 | Start writing Test cases |  | 3d | 2015-06-09 | 2015-06-11 | 110 | 18d |  | DocTeam | 24h |
| 112 | 1.3 | **Construction** |  | 29d | 2015-07-07 | 2015-08-17 | 58 | 0d |  |  | 756h |
| 113 | 1.3.1 | **Design** |  | 3d | 2015-07-08 | 2015-07-10 |  | 0d |  |  | 24h |
| 114 | 1.3.1.1 | Refine Design document |  | 3d | 2015-07-08 | 2015-07-10 |  | 0d |  | HaiDT | 24h |
| 115 | 1.3.2 | **Coding** |  | 21d | 2015-07-16 | 2015-08-13 | 113FS+3d | 0d |  |  | 268h |
| 116 | 1.3.2.1 | Build prototype |  | 2d | 2015-07-16 | 2015-07-17 |  | 0d |  | DevTeam | 16h |
| 117 | 1.3.2.2 | Prototype approved | milestone | 0d | 2015-07-17 | 2015-07-17 | 116 | 0d |  |  |  |
| 118 | 1.3.2.3 | **Coding product (Continue)** |  | 17d | 2015-07-20 | 2015-08-11 | 117 | 0d |  |  | 252h |
| 119 | 1.3.2.3.1 | Develop UI |  | 1w | 2015-07-20 | 2015-07-24 |  | 0d |  | DucHN | 40h |
| 120 | 1.3.2.3.2 | Develop objects |  | 2d | 2015-07-20 | 2015-07-21 | 119SS | 0d |  | HaiDT | 16h |
| 121 | 1.3.2.3.3 | Create system documentation |  | 1d | 2015-07-20 | 2015-07-20 | 120SS | 18d |  | HoangNM | 8h |
| 122 | 1.3.2.3.4 | **Coding Modules** |  | 14d | 2015-07-23 | 2015-08-11 | 120FS+1d | 0d |  |  | 188h |
| 123 | 1.3.2.3.4.1 | **Part 1** |  | 9d | 2015-07-23 | 2015-08-04 |  | 0d |  |  | 124h |
| 124 | 1.3.2.3.4.1.1 | Homepage Module |  | 3d | 2015-07-23 | 2015-07-27 |  | 0d |  | DucHN | 24h |
| 125 | 1.3.2.3.4.1.2 | User personal page Module |  | 2d | 2015-07-23 | 2015-07-24 | 124SS | 6.5d | 0d | HaiDT | 16h |
| 126 | 1.3.2.3.4.1.3 | Admin Module |  | 2d | 2015-07-23 | 2015-07-24 | 124SS | 5d | 0d | HoangNM | 16h |
| 127 | 1.3.2.3.4.1.4 | Search Module |  | 3d | 2015-07-28 | 2015-07-30 | 124 | 0d |  | DucHN | 24h |
| 128 | 1.3.2.3.4.1.5 | Login/Logout Module |  | 0.5d | 2015-07-27 | 2015-07-27 | 125 | 6.5d |  | HaiDT | 4h |
| 129 | 1.3.2.3.4.1.6 | Friend Module |  | 2d | 2015-07-27 | 2015-07-28 | 126 | 5d |  | HoangNM | 16h |
| 130 | 1.3.2.3.4.1.7 | Room module |  | 3d | 2015-07-31 | 2015-08-04 | 127 | 0d |  | DucHN | 24h |

| ID | WBS | Task | Type | Duration | Start | Finish | Predecessors | Total slack | Free slack | Resources | Work |
| --- | --- | --- | --- | --- | --- | --- | --- | --- | --- | --- | --- |
| 131 | 1.3.2.3.4.2 | **Part 2** |  | 4d | 2015-08-06 | 2015-08-11 | 123FS+1d | 0d |  |  | 64h |
| 132 | 1.3.2.3.4.2.1 | Suggestion Module |  | 2d | 2015-08-06 | 2015-08-07 | 128 | 0d |  | HaiDT | 16h |
| 133 | 1.3.2.3.4.2.2 | Sharing Module |  | 0.5d | 2015-08-06 | 2015-08-06 | 129 | 0.5d | 0d | HoangNM | 4h |
| 134 | 1.3.2.3.4.2.3 | Report Module |  | 0.5d | 2015-08-06 | 2015-08-06 | 130 | 3.5d |  | DucHN | 4h |
| 135 | 1.3.2.3.4.2.4 | Chat module |  | 2d | 2015-08-10 | 2015-08-11 | 132 | 0d |  | HaiDT | 16h |
| 136 | 1.3.2.3.4.2.5 | Planning Module |  | 3d | 2015-08-06 | 2015-08-11 | 133 | 0.5d |  | HoangNM | 24h |
| 137 | 1.3.2.4 | Product development completes | milestone | 0d | 2015-08-13 | 2015-08-13 | 122FS+2d | 0d |  |  |  |
| 138 | 1.3.3 | **Testing** |  | 29d | 2015-07-07 | 2015-08-17 | 107 | 0d |  |  | 280h |
| 139 | 1.3.3.1 | **Writing Test cases (Continue)** |  | 12d | 2015-07-08 | 2015-07-23 |  | 0d |  |  | 80h |
| 140 | 1.3.3.1.1 | Create Integration Test Case |  | 3d | 2015-07-08 | 2015-07-10 |  | 0d |  | ThuyLM | 24h |
| 141 | 1.3.3.1.2 | Update and review Integration Test Case |  | 2d | 2015-07-15 | 2015-07-16 | 140FS+2d | 0d |  | HieuTM | 16h |
| 142 | 1.3.3.1.3 | Create System Test Case |  | 3d | 2015-07-17 | 2015-07-21 | 141 | 0d |  | DocTeam | 24h |
| 143 | 1.3.3.1.4 | Update and review System Test Case |  | 2d | 2015-07-22 | 2015-07-23 | 142 | 0d |  | DocTeam | 16h |
| 144 | 1.3.3.2 | Writing Test cases completes | milestone | 0d | 2015-07-07 | 2015-07-07 |  | 29d |  |  |  |
| 145 | 1.3.3.3 | **Execute Test** |  | 17d | 2015-07-24 | 2015-08-17 | 139 | 0d |  |  | 200h |
| 146 | 1.3.3.3.1 | **Execute Test Part 1** |  | 8d | 2015-07-24 | 2015-08-04 |  | 0d |  |  | 96h |
| 147 | 1.3.3.3.1.1 | Execute Component Test |  | 2d | 2015-07-24 | 2015-07-27 |  | 0d |  | DocTeam | 16h |
| 148 | 1.3.3.3.1.2 | Fix bug Component Test |  | 2d | 2015-07-28 | 2015-07-29 | 147 | 4d |  | DocTeam | 16h |
| 149 | 1.3.3.3.1.3 | Execute Integration Test |  | 2d | 2015-07-28 | 2015-07-29 | 147 | 0d |  | DocTeam | 16h |
| 150 | 1.3.3.3.1.4 | Fix bug Integration Test |  | 2d | 2015-07-30 | 2015-07-31 | 149 | 2d |  | DocTeam | 16h |
| 151 | 1.3.3.3.1.5 | Execute System Test |  | 2d | 2015-07-30 | 2015-07-31 | 149 | 0d |  | DocTeam | 16h |
| 152 | 1.3.3.3.1.6 | Fix bug System Test |  | 2d | 2015-08-03 | 2015-08-04 | 151 | 0d |  | DocTeam | 16h |
| 153 | 1.3.3.3.2 | **Execute Test Part 2** |  | 8d | 2015-08-05 | 2015-08-14 | 146 | 0d |  |  | 96h |
| 154 | 1.3.3.3.2.1 | Execute Component Test |  | 2d | 2015-08-05 | 2015-08-06 |  | 0d |  | DocTeam | 16h |
| 155 | 1.3.3.3.2.2 | Fix bug Component Test |  | 2d | 2015-08-07 | 2015-08-10 | 154 | 5d |  | DocTeam | 16h |
| 156 | 1.3.3.3.2.3 | Execute Integration Test |  | 2d | 2015-08-07 | 2015-08-10 | 154 | 0d |  | DocTeam | 16h |
| 157 | 1.3.3.3.2.4 | Fix bug Integration Test |  | 2d | 2015-08-11 | 2015-08-12 | 156 | 3d |  | DocTeam | 16h |
| 158 | 1.3.3.3.2.5 | Execute System Test |  | 2d | 2015-08-11 | 2015-08-12 | 156 | 0d |  | DocTeam | 16h |
| 159 | 1.3.3.3.2.6 | Fix bug System Test |  | 2d | 2015-08-13 | 2015-08-14 | 158 | 0d |  | DocTeam | 16h |
| 160 | 1.3.3.3.3 | Create Test Report first verstion |  | 1d | 2015-08-17 | 2015-08-17 | 159 | 0d |  | DocTeam | 8h |
| 161 | 1.3.3.3.4 | Complete Testing | milestone | 0d | 2015-08-17 | 2015-08-17 | 160 | 0d |  |  |  |

| ID | WBS | Task | Duration | Start | Finish | Predecessors | Total slack | Resources | Work |
| --- | --- | --- | --- | --- | --- | --- | --- | --- | --- |
| 162 | 1.3.4 | **User Manual** | 2d | 2015-08-14 | 2015-08-17 | 115 | 0d |  | 24h |
| 163 | 1.3.4.1 | Create Installation guideline | 1d | 2015-08-14 | 2015-08-14 |  | 0d | DucHN | 8h |
| 164 | 1.3.4.2 | Create User guideline | 1d | 2015-08-14 | 2015-08-14 | 163SS | 0d | HaiDT | 8h |
| 165 | 1.3.4.3 | Review + Update guidelines | 1d | 2015-08-17 | 2015-08-17 | 164 | 0d | DucHN | 8h |
| 166 | 1.3.5 | **Manage development** | 5d | 2015-07-16 | 2015-07-22 | 115SS | 18d |  | 160h |
| 167 | 1.3.5.1 | **Manage scope/cost/time** | 5d | 2015-07-16 | 2015-07-22 |  | 18d |  | 80h |
| 168 | 1.3.5.1.1 | Monitor product changes | 1w | 2015-07-16 | 2015-07-22 |  | 18d | DucHN | 40h |
| 169 | 1.3.5.1.2 | Monitor project changes | 1w | 2015-07-16 | 2015-07-22 |  | 18d | DucHN | 40h |
| 170 | 1.3.5.2 | **Manage communications** | 1d | 2015-07-16 | 2015-07-16 |  | 22d |  | 40h |
| 171 | 1.3.5.2.1 | **Implement communications methods and strategies** | 1d | 2015-07-16 | 2015-07-16 |  | 22d |  | 8h |
| 172 | 1.3.5.2.1.1 | Select tools | 1d | 2015-07-16 | 2015-07-16 |  | 22d | DucHN | 8h |
| 173 | 1.3.5.2.2 | **Distribute information** | 1d | 2015-07-16 | 2015-07-16 |  | 22d |  | 24h |
| 174 | 1.3.5.2.2.1 | Attend team meeting | 1d | 2015-07-16 | 2015-07-16 |  | 22d | TEAM | 8h |
| 175 | 1.3.5.2.2.2 | Create status reports | 1d | 2015-07-16 | 2015-07-16 |  | 22d | HoangNM | 8h |
| 176 | 1.3.5.2.2.3 | Create Weekly Report | 1d | 2015-07-16 | 2015-07-16 |  | 22d | DucHN | 8h |
| 177 | 1.3.5.2.3 | Resolve communications problems | 1d | 2015-07-16 | 2015-07-16 |  | 22d | DucHN | 8h |
| 178 | 1.3.5.3 | **Manage quality control** | 1d | 2015-07-16 | 2015-07-16 |  | 22d |  | 16h |
| 179 | 1.3.5.3.1 | Monitor product quality | 1d | 2015-07-16 | 2015-07-16 |  | 22d | DucHN | 8h |
| 180 | 1.3.5.3.2 | **Monitor project quality** | 1d | 2015-07-16 | 2015-07-16 |  | 22d |  | 8h |
| 181 | 1.3.5.3.2.1 | Implement process improvements | 1d | 2015-07-16 | 2015-07-16 |  | 22d | DucHN | 8h |
| 182 | 1.3.5.4 | **Manage risk** | 1d | 2015-07-16 | 2015-07-16 |  | 22d |  | 16h |
| 183 | 1.3.5.4.1 | Monitor risks | 1d | 2015-07-16 | 2015-07-16 |  | 22d | DucHN | 8h |
| 184 | 1.3.5.4.2 | Specify responses | 1d | 2015-07-16 | 2015-07-16 |  | 22d | DucHN | 8h |
| 185 | 1.3.5.5 | Manage integration | 1d | 2015-07-16 | 2015-07-16 |  | 22d | DucHN | 8h |

| ID | WBS | Task | Duration | Start | Finish | Predecessors | Total slack | Constraint | Resources | Work |
| --- | --- | --- | --- | --- | --- | --- | --- | --- | --- | --- |
| 186 | 1.4 | **Termination** | 7d | 2015-08-18 | 2015-08-26 | 112 | 0d |  |  | 48h |
| 187 | 1.4.1 | **Pre-Closing** | 2d | 2015-08-18 | 2015-08-19 |  | 0d |  |  | 16h |
| 188 | 1.4.1.1 | Training presentation | 2d | 2015-08-18 | 2015-08-19 |  | 0d |  | TEAM | 16h |
| 189 | 1.4.2 | **Closing** | 4d | 2015-08-21 | 2015-08-26 | 187FS+1d | 0d |  |  | 32h |
| 190 | 1.4.2.1 | Prepare for presentation | 3d | 2015-08-21 | 2015-08-25 |  | 0d |  | TEAM | 24h |
| 191 | 1.4.2.2 | Represent Capstone Project and Completed | 1d | 2015-08-26 | 2015-08-26 | 190 | 0d | finish no earlier than 2015-08-26 | TEAM | 8h |
