# TT_ProjectSchedule

Schedule from MS Project, 2015-05-13 to 2015-08-18.
FPT

## Calendars

- Standard: Mon-Fri 08:00-12:00, 13:00-17:00; Sat-Sun off.

## Resources

| Resource |
| --- |
| DucHN |
| HaiDT |
| HoangNM |
| ThuyLM |
| LucPT |
| HieuTM |
| 4 |
| 3 |

## Schedule

| ID | WBS | Task | Duration | Start | Finish | Predecessors | Total slack | Free slack |
| --- | --- | --- | --- | --- | --- | --- | --- | --- |
| 1 | 1 | **Fly Away Plus** | 70d? | 2015-05-13 | 2015-08-18 |  | 0d |  |
| 2 | 1.1 | **Initiation** | 14d | 2015-05-13 | 2015-06-01 |  | 44d | 0d |
| 3 | 1.1.1 | Form up team roles | 0.5d | 2015-05-13 | 2015-05-13 |  | 57.5d |  |
| 4 | 1.1.2 | Uniform idea meeting | 0.5d | 2015-05-13 | 2015-05-13 |  | 44d | 0d |
| 5 | 1.1.3 | **Project Clarification** | 0.5d | 2015-05-13 | 2015-05-13 |  | 44d | 0d |
| 6 | 1.1.3.1 | Clarify project scope | 0.1d | 2015-05-13 | 2015-05-13 | 4 | 44d | 0d |
| 7 | 1.1.3.2 | Clarify technical requirements | 0.1d | 2015-05-13 | 2015-05-13 | 6 | 44d | 0d |
| 8 | 1.1.3.3 | Clarify rules in Team | 0.1d | 2015-05-13 | 2015-05-13 | 7 | 44d | 0d |
| 9 | 1.1.3.4 | Clarify working environments | 0.1d | 2015-05-13 | 2015-05-13 | 8 | 44d | 0d |
| 10 | 1.1.3.5 | Develop communications plan | 0.1d | 2015-05-13 | 2015-05-13 | 9 | 44d |  |
| 11 | 1.1.4 | List project features | 1d | 2015-05-13 | 2015-05-13 |  | 57d |  |
| 12 | 1.1.5 | Initiate Project structure | 1d | 2015-05-13 | 2015-05-13 |  | 57d |  |
| 13 | 1.1.6 | Create Coding conventions | 0.5d | 2015-05-13 | 2015-05-13 |  | 57.5d |  |
| 14 | 1.1.7 | **Environment** | 1d | 2015-05-14 | 2015-05-14 | 5 | 44d | 0d |
| 15 | 1.1.7.1 | Create guideline of installing and using environments | 0.5d | 2015-05-14 | 2015-05-14 |  | 44d | 0d |
| 16 | 1.1.7.2 | Setup TortoiseGit | 0.5d | 2015-05-14 | 2015-05-14 | 15 | 44d |  |
| 17 | 1.1.7.3 | Setup Visual Studio 2013 Ultimate | 0.5d | 2015-05-14 | 2015-05-14 |  | 44.5d |  |
| 18 | 1.1.7.4 | Setup Microsoft SQL Server 2012 | 0.5d | 2015-05-14 | 2015-05-14 |  | 44.5d |  |
| 19 | 1.1.7.5 | Training environments meeting | 0.5d | 2015-05-14 | 2015-05-14 |  | 44.5d |  |
| 20 | 1.1.8 | **Technology research** | 12d | 2015-05-15 | 2015-06-01 | 14 | 44d |  |
| 21 | 1.1.8.1 | Research technologies to be used in project | 3d | 2015-05-15 | 2015-05-19 |  | 53d |  |
| 22 | 1.1.8.2 | Study .NET MVC5 | 1w | 2015-05-15 | 2015-05-21 |  | 44d | 0d |
| 23 | 1.1.8.3 | Study Bootstrap | 2d | 2015-05-22 | 2015-05-25 | 22 | 44d | 0d |
| 24 | 1.1.8.4 | Study Javascript, jQuery | 1w | 2015-05-26 | 2015-06-01 | 23 | 44d |  |

| ID | WBS | Task | Type | Duration | Start | Finish | Predecessors | Total slack | Free slack |
| --- | --- | --- | --- | --- | --- | --- | --- | --- | --- |
| 25 | 1.1.9 | **Project Introduction** |  | 4d | 2015-05-15 | 2015-05-20 |  | 51.5d | 0d |
| 26 | 1.1.9.1 | Create "Project Introduction" document |  | 2d | 2015-05-15 | 2015-05-18 | 14 | 51.5d | 0d |
| 27 | 1.1.9.2 | Peer review "Project Introduction" document |  | 0.5d | 2015-05-19 | 2015-05-19 | 26 | 51.5d | 0d |
| 28 | 1.1.9.3 | Update "Project Introduction" document draft |  | 1d | 2015-05-19 | 2015-05-20 | 27 | 51.5d | 0d |
| 29 | 1.1.9.4 | Update "Project Introduction" based on instructor's comments |  | 0.5d | 2015-05-20 | 2015-05-20 | 28 | 51.5d | 0d |
| 30 | 1.1.9.5 | Summit Project Introduction | milestone | 0d | 2015-05-20 | 2015-05-20 | 29 | 51.5d |  |
| 31 | 1.1.10 | Kick-off meeting |  | 0.5d | 2015-05-21 | 2015-05-21 | 25 | 51.5d |  |
| 32 | 1.1.11 | **Q&A sheet** |  | 0.5d | 2015-05-21 | 2015-05-21 | 25 | 51.5d |  |
| 33 | 1.1.11.1 | Create Q&A |  | 0.5d | 2015-05-21 | 2015-05-21 |  | 51.5d |  |
| 34 | 1.1.11.2 | Update Q&A sheet |  | 0.5d | 2015-05-21 | 2015-05-21 |  | 51.5d |  |
| 35 | 1.1.11.3 | Translate Q&A sheet |  | 0.5d | 2015-05-21 | 2015-05-21 |  | 51.5d |  |
| 36 | 1.1.12 | **Project Plan** |  | 11.5d | 2015-05-13 | 2015-05-28 |  | 46.5d |  |
| 37 | 1.1.12.1 | Develop project definition |  | 2d | 2015-05-13 | 2015-05-14 |  | 46.5d | 0d |
| 38 | 1.1.12.2 | Work BreakDown Structure |  | 3d | 2015-05-15 | 2015-05-19 | 37 | 46.5d | 0d |
| 39 | 1.1.12.3 | Create project schedule document |  | 3d | 2015-05-20 | 2015-05-22 | 38 | 46.5d | 0d |
| 40 | 1.1.12.4 | Create project plan document |  | 1d | 2015-05-25 | 2015-05-25 | 39 | 46.5d | 0d |
| 41 | 1.1.12.5 | Create CM Plan document |  | 0.5d | 2015-05-26 | 2015-05-26 | 40 | 46.5d | 0d |
| 42 | 1.1.12.6 | Review & get comment of Project Plan |  | 0.5d | 2015-05-26 | 2015-05-26 | 41 | 46.5d | 0d |
| 43 | 1.1.12.7 | Develop Risk Register |  | 0.5d | 2015-05-27 | 2015-05-27 | 42 | 47.5d |  |
| 44 | 1.1.12.8 | Update Project Plan documents (Schedule, Project Plan in MS Word, CM Plan) |  | 1d | 2015-05-27 | 2015-05-27 | 42 | 46.5d | 0d |
| 45 | 1.1.12.9 | Create PP Review check list |  | 0.5d | 2015-05-28 | 2015-05-28 | 44 | 46.5d | 0d |
| 46 | 1.1.12.10 | Summit Project Plan Final version | milestone | 0d | 2015-05-28 | 2015-05-28 | 45 | 46.5d |  |
| 47 | 1.1.13 | **Requirement** |  | 4d | 2015-05-13 | 2015-05-18 |  | 54d |  |
| 48 | 1.1.13.1 | **User Requirement** |  | 2d | 2015-05-13 | 2015-05-14 |  | 54d | 0d |
| 49 | 1.1.13.1.1 | Develop brief "User Requirements Specification" document |  | 1d | 2015-05-13 | 2015-05-13 |  | 54d | 0d |
| 50 | 1.1.13.1.2 | Peer review brief "User Requirements Specification" document |  | 0.5d | 2015-05-14 | 2015-05-14 | 49 | 54d | 0d |
| 51 | 1.1.13.1.3 | Update brief "User Requirements Specification" document |  | 0.5d | 2015-05-14 | 2015-05-14 | 50 | 54d |  |

| ID | WBS | Task | Type | Duration | Start | Finish | Predecessors | Total slack | Free slack |
| --- | --- | --- | --- | --- | --- | --- | --- | --- | --- |
| 52 | 1.1.13.2 | **Mock-up screens** |  | 2d | 2015-05-15 | 2015-05-18 | 48 | 54d |  |
| 53 | 1.1.13.2.1 | Create mock-up screens |  | 2d | 2015-05-15 | 2015-05-18 |  | 54d |  |
| 54 | 1.1.13.3 | Collect business requirements and processes |  | 0.5d | 2015-05-13 | 2015-05-13 |  | 57.5d |  |
| 55 | 1.1.13.4 | Develop main features' mockup screens |  | 1d | 2015-05-13 | 2015-05-13 |  | 57d |  |
| 56 | 1.1.13.5 | Review and edit screen main features' mockup screens |  | 0.5d | 2015-05-13 | 2015-05-13 |  | 57.5d |  |
| 57 | 1.1.13.6 | Complete main features' mockup screens | milestone | 0d | 2015-05-13 | 2015-05-13 |  | 58d |  |
| 58 | 1.2 | **Solution** |  | 1d? | 2015-06-01 | 2015-06-02 | 2 | 44d | 15d |
| 59 | 1.2.1 | **Sofware Requirement Specification** |  | 1d? | 2015-06-02 | 2015-06-02 |  | 44d |  |
| 60 | 1.2.1.1 | Complete mock-up screens |  | 1d? | 2015-06-02 | 2015-06-02 |  | 44d |  |
| 61 | 1.2.1.2 | **Functional Requirement Specification** |  | 1d? | 2015-06-02 | 2015-06-02 |  | 44d |  |
| 62 | 1.2.1.2.1 | **Part 1** |  | 1d? | 2015-06-02 | 2015-06-02 |  | 44d |  |
| 63 | 1.2.1.2.1.1 | Homepage Module |  | 1d? | 2015-06-02 | 2015-06-02 |  | 44d |  |
| 64 | 1.2.1.2.1.2 | User personal page Module |  | 1d? | 2015-06-02 | 2015-06-02 |  | 44d |  |
| 65 | 1.2.1.2.1.3 | Admin Module |  | 1d? | 2015-06-02 | 2015-06-02 |  | 44d |  |
| 66 | 1.2.1.2.1.4 | Search Module |  | 1d? | 2015-06-02 | 2015-06-02 |  | 44d |  |
| 67 | 1.2.1.2.1.5 | Login/Logout Module |  | 1d? | 2015-06-02 | 2015-06-02 |  | 44d |  |
| 68 | 1.2.1.2.1.6 | Friend Module |  | 1d? | 2015-06-02 | 2015-06-02 |  | 44d |  |
| 69 | 1.2.1.2.1.7 | Room module |  | 1d? | 2015-06-02 | 2015-06-02 |  | 44d |  |
| 70 | 1.2.1.2.2 | **Part 2** |  | 1d? | 2015-06-02 | 2015-06-02 |  | 44d |  |
| 71 | 1.2.1.2.2.1 | Suggestion Module |  | 1d? | 2015-06-02 | 2015-06-02 |  | 44d |  |
| 72 | 1.2.1.2.2.2 | Sharing Module |  | 1d? | 2015-06-02 | 2015-06-02 |  | 44d |  |
| 73 | 1.2.1.2.2.3 | Report Module |  | 1d? | 2015-06-02 | 2015-06-02 |  | 44d |  |
| 74 | 1.2.1.2.2.4 | Planing trip helper Module |  | 1d? | 2015-06-02 | 2015-06-02 |  | 44d |  |
| 75 | 1.2.1.2.2.5 | Chat module |  | 1d? | 2015-06-02 | 2015-06-02 |  | 44d |  |

| ID | WBS | Task | Duration | Start | Finish | Total slack |
| --- | --- | --- | --- | --- | --- | --- |
| 76 | 1.2.1.3 | **Non-functional Requirements Specification** | 1d? | 2015-06-02 | 2015-06-02 | 44d |
| 77 | 1.2.1.3.1 | Develop User Interface requirements | 1d? | 2015-06-02 | 2015-06-02 | 44d |
| 78 | 1.2.1.3.2 | Develop Performance requirements | 1d? | 2015-06-02 | 2015-06-02 | 44d |
| 79 | 1.2.2 | **System Architectural Design** | 1d? | 2015-06-02 | 2015-06-02 | 44d |
| 80 | 1.2.2.1 | Define the system structure and unify system features | 1d? | 2015-06-02 | 2015-06-02 | 44d |
| 81 | 1.2.2.2 | Study the common System Architetures | 1d? | 2015-06-02 | 2015-06-02 | 44d |
| 82 | 1.2.2.3 | Make choice of System Architeture | 1d? | 2015-06-02 | 2015-06-02 | 44d |
| 83 | 1.2.2.4 | Complete Architecture Design version 1.0 | 1d? | 2015-06-02 | 2015-06-02 | 44d |
| 84 | 1.2.3 | **Detailed Design** | 1d? | 2015-06-02 | 2015-06-02 | 44d |
| 85 | 1.2.3.1 | Database design | 1d? | 2015-06-02 | 2015-06-02 | 44d |
| 86 | 1.2.3.2 | **Screen design** | 1d? | 2015-06-02 | 2015-06-02 | 44d |
| 87 | 1.2.3.2.1 | Create Screen Flow digram | 1d? | 2015-06-02 | 2015-06-02 | 44d |
| 88 | 1.2.3.2.2 | Create Screen Definition | 1d? | 2015-06-02 | 2015-06-02 | 44d |
| 89 | 1.2.3.2.3 | Create Screen Design | 1d? | 2015-06-02 | 2015-06-02 | 44d |
| 90 | 1.2.3.3 | **Class/Component Design** | 1d? | 2015-06-02 | 2015-06-02 | 44d |
| 91 | 1.2.3.3.1 | Create Data models | 1d? | 2015-06-02 | 2015-06-02 | 44d |
| 92 | 1.2.3.3.2 | List components of the system | 1d? | 2015-06-02 | 2015-06-02 | 44d |
| 93 | 1.2.3.3.3 | Break modules into classes | 1d? | 2015-06-02 | 2015-06-02 | 44d |
| 94 | 1.2.3.3.4 | Create Class diagram | 1d? | 2015-06-02 | 2015-06-02 | 44d |
| 95 | 1.2.3.3.5 | Create Class description document | 1d? | 2015-06-02 | 2015-06-02 | 44d |
| 96 | 1.2.3.3.6 | Create Flow diagram | 1d? | 2015-06-02 | 2015-06-02 | 44d |
| 97 | 1.2.3.3.7 | Create Progress Report 2 | 1d? | 2015-06-02 | 2015-06-02 | 44d |
| 98 | 1.2.3.3.8 | Create Design review checklists | 1d? | 2015-06-02 | 2015-06-02 | 44d |
| 99 | 1.2.4 | **System Database Design** | 1d? | 2015-06-02 | 2015-06-02 | 44d |
| 100 | 1.2.4.1 | Organize information to Database tables | 1d? | 2015-06-02 | 2015-06-02 | 44d |
| 101 | 1.2.4.2 | Define tables' relationships | 1d? | 2015-06-02 | 2015-06-02 | 44d |
| 102 | 1.2.4.3 | Apply normalization rules to Database design | 1d? | 2015-06-02 | 2015-06-02 | 44d |
| 103 | 1.2.4.4 | Refine Database design | 1d? | 2015-06-02 | 2015-06-02 | 44d |

| ID | WBS | Task | Type | Duration | Start | Finish | Predecessors | Total slack |
| --- | --- | --- | --- | --- | --- | --- | --- | --- |
| 104 | 1.2.5 | **Project Management** |  | 1d? | 2015-06-02 | 2015-06-02 |  | 44d |
| 105 | 1.2.5.1 | Update project plan |  | 1d? | 2015-06-02 | 2015-06-02 |  | 44d |
| 106 | 1.2.5.2 | Create Progress Report 3 |  | 1d? | 2015-06-02 | 2015-06-02 |  | 44d |
| 107 | 1.2.5.3 | Coding About/Contact Page |  | 1d? | 2015-06-02 | 2015-06-02 |  | 44d |
| 108 | 1.2.5.4 | Coding Login with Facebook and Google+ feature |  | 1d? | 2015-06-02 | 2015-06-02 |  | 44d |
| 109 | 1.2.6 | **Test** |  | 1d? | 2015-06-01 | 2015-06-02 |  | 44d |
| 110 | 1.2.6.1 | Create Test plan |  | 1d? | 2015-06-02 | 2015-06-02 |  | 44d |
| 111 | 1.2.6.2 | Review + Update Test plan |  | 1d? | 2015-06-02 | 2015-06-02 |  | 44d |
| 112 | 1.2.6.3 | Test plan approved | milestone | 0d | 2015-06-01 | 2015-06-01 |  | 45d |
| 113 | 1.2.6.4 | Start writing Test cases |  | 1d? | 2015-06-02 | 2015-06-02 |  | 44d |
| 114 | 1.3 | **Construction** |  | 6w | 2015-06-23 | 2015-08-04 | 58 |  |
| 115 | 1.3.1 | **Design** |  | 1d | 2015-06-24 | 2015-06-24 |  | 29d |
| 116 | 1.3.1.1 | Refine Design document |  | 1d | 2015-06-24 | 2015-06-24 |  | 29d |
| 117 | 1.3.2 | **Coding** |  | 1d? | 2015-06-23 | 2015-06-24 |  | 29d |
| 118 | 1.3.2.1 | Build prototype |  | 1d | 2015-06-24 | 2015-06-24 |  | 29d |
| 119 | 1.3.2.2 | Prototype approved | milestone | 0d | 2015-06-23 | 2015-06-23 |  | 30d |
| 120 | 1.3.2.3 | **Coding product (Continue)** |  | 1d? | 2015-06-24 | 2015-06-24 |  | 29d |
| 121 | 1.3.2.3.1 | Develop UI |  | 1d | 2015-06-24 | 2015-06-24 |  | 29d |
| 122 | 1.3.2.3.2 | Develop objects |  | 1d | 2015-06-24 | 2015-06-24 |  | 29d |
| 123 | 1.3.2.3.3 | Create system documentation |  | 1d | 2015-06-24 | 2015-06-24 |  | 29d |
| 124 | 1.3.2.3.4 | **Coding Modules** |  | 1d? | 2015-06-24 | 2015-06-24 |  | 29d |
| 125 | 1.3.2.3.4.1 | **Part 1** |  | 1d? | 2015-06-24 | 2015-06-24 |  | 29d |
| 126 | 1.3.2.3.4.1.1 | Homepage Module |  | 1d? | 2015-06-24 | 2015-06-24 |  | 29d |
| 127 | 1.3.2.3.4.1.2 | User personal page Module |  | 1d? | 2015-06-24 | 2015-06-24 |  | 29d |
| 128 | 1.3.2.3.4.1.3 | Admin Module |  | 1d? | 2015-06-24 | 2015-06-24 |  | 29d |
| 129 | 1.3.2.3.4.1.4 | Search Module |  | 1d? | 2015-06-24 | 2015-06-24 |  | 29d |
| 130 | 1.3.2.3.4.1.5 | Login/Logout Module |  | 1d? | 2015-06-24 | 2015-06-24 |  | 29d |
| 131 | 1.3.2.3.4.1.6 | Friend Module |  | 1d? | 2015-06-24 | 2015-06-24 |  | 29d |
| 132 | 1.3.2.3.4.1.7 | Room module |  | 1d? | 2015-06-24 | 2015-06-24 |  | 29d |

| ID | WBS | Task | Type | Duration | Start | Finish | Total slack |
| --- | --- | --- | --- | --- | --- | --- | --- |
| 133 | 1.3.2.3.4.2 | **Part 2** |  | 1d? | 2015-06-24 | 2015-06-24 | 29d |
| 134 | 1.3.2.3.4.2.1 | Suggestion Module |  | 1d? | 2015-06-24 | 2015-06-24 | 29d |
| 135 | 1.3.2.3.4.2.2 | Sharing Module |  | 1d? | 2015-06-24 | 2015-06-24 | 29d |
| 136 | 1.3.2.3.4.2.3 | Report Module |  | 1d? | 2015-06-24 | 2015-06-24 | 29d |
| 137 | 1.3.2.3.4.2.4 | Planing trip helper Module |  | 1d? | 2015-06-24 | 2015-06-24 | 29d |
| 138 | 1.3.2.3.4.2.5 | Chat module |  | 1d? | 2015-06-24 | 2015-06-24 | 29d |
| 139 | 1.3.2.4 | Product development completes | milestone | 0d | 2015-06-23 | 2015-06-23 | 30d |
| 140 | 1.3.3 | **Testing** |  | 1d? | 2015-06-23 | 2015-06-24 | 29d |
| 141 | 1.3.3.1 | **Writing Test cases (Continue)** |  | 1d? | 2015-06-24 | 2015-06-24 | 29d |
| 142 | 1.3.3.1.1 | Create Integration Test Case |  | 1d? | 2015-06-24 | 2015-06-24 | 29d |
| 143 | 1.3.3.1.2 | Update and review Integration Test Case |  | 1d? | 2015-06-24 | 2015-06-24 | 29d |
| 144 | 1.3.3.1.3 | Create System Test Case |  | 1d? | 2015-06-24 | 2015-06-24 | 29d |
| 145 | 1.3.3.1.4 | Update and review System Test Case |  | 1d? | 2015-06-24 | 2015-06-24 | 29d |
| 146 | 1.3.3.2 | Writing Test cases completes | milestone | 0d | 2015-06-23 | 2015-06-23 | 30d |
| 147 | 1.3.3.3 | **Execute Test** |  | 1d? | 2015-06-23 | 2015-06-24 | 29d |
| 148 | 1.3.3.3.1 | **Execute Test Part 1** |  | 1d? | 2015-06-24 | 2015-06-24 | 29d |
| 149 | 1.3.3.3.1.1 | Execute Component Test |  | 1d? | 2015-06-24 | 2015-06-24 | 29d |
| 150 | 1.3.3.3.1.2 | Fix bug Component Test |  | 1d? | 2015-06-24 | 2015-06-24 | 29d |
| 151 | 1.3.3.3.1.3 | Execute Integration Test |  | 1d? | 2015-06-24 | 2015-06-24 | 29d |
| 152 | 1.3.3.3.1.4 | Fix bug Integration Test |  | 1d? | 2015-06-24 | 2015-06-24 | 29d |
| 153 | 1.3.3.3.1.5 | Execute System Test |  | 1d? | 2015-06-24 | 2015-06-24 | 29d |
| 154 | 1.3.3.3.1.6 | Fix bug System Test |  | 1d? | 2015-06-24 | 2015-06-24 | 29d |
| 155 | 1.3.3.3.2 | **Execute Test Part 2** |  | 1d? | 2015-06-24 | 2015-06-24 | 29d |
| 156 | 1.3.3.3.2.1 | Execute Component Test |  | 1d? | 2015-06-24 | 2015-06-24 | 29d |
| 157 | 1.3.3.3.2.2 | Fix bug Component Test |  | 1d? | 2015-06-24 | 2015-06-24 | 29d |
| 158 | 1.3.3.3.2.3 | Execute Integration Test |  | 1d? | 2015-06-24 | 2015-06-24 | 29d |
| 159 | 1.3.3.3.2.4 | Fix bug Integration Test |  | 1d? | 2015-06-24 | 2015-06-24 | 29d |
| 160 | 1.3.3.3.2.5 | Execute System Test |  | 1d? | 2015-06-24 | 2015-06-24 | 29d |
| 161 | 1.3.3.3.2.6 | Fix bug System Test |  | 1d? | 2015-06-24 | 2015-06-24 | 29d |
| 162 | 1.3.3.3.3 | Create Test Report first verstion |  | 1d? | 2015-06-24 | 2015-06-24 | 29d |
| 163 | 1.3.3.3.4 | Complete Testing | milestone | 0d | 2015-06-23 | 2015-06-23 | 30d |

| ID | WBS | Task | Duration | Start | Finish | Total slack |
| --- | --- | --- | --- | --- | --- | --- |
| 164 | 1.3.4 | **User Manual** | 1d? | 2015-06-24 | 2015-06-24 | 29d |
| 165 | 1.3.4.1 | Create Installation guideline | 1d? | 2015-06-24 | 2015-06-24 | 29d |
| 166 | 1.3.4.2 | Create User guideline | 1d? | 2015-06-24 | 2015-06-24 | 29d |
| 167 | 1.3.4.3 | Review + Update guidelines | 1d? | 2015-06-24 | 2015-06-24 | 29d |
| 168 | 1.3.5 | **Manage development** | 1d? | 2015-06-24 | 2015-06-24 | 29d |
| 169 | 1.3.5.1 | **Manage scope/cost/time** | 1d? | 2015-06-24 | 2015-06-24 | 29d |
| 170 | 1.3.5.1.1 | Monitor product changes | 1d? | 2015-06-24 | 2015-06-24 | 29d |
| 171 | 1.3.5.1.2 | Monitor project changes | 1d? | 2015-06-24 | 2015-06-24 | 29d |
| 172 | 1.3.5.2 | **Manage communications** | 1d? | 2015-06-24 | 2015-06-24 | 29d |
| 173 | 1.3.5.2.1 | **Implement communications methods and strategies** | 1d? | 2015-06-24 | 2015-06-24 | 29d |
| 174 | 1.3.5.2.1.1 | Select tools | 1d? | 2015-06-24 | 2015-06-24 | 29d |
| 175 | 1.3.5.2.2 | **Distribute information** | 1d? | 2015-06-24 | 2015-06-24 | 29d |
| 176 | 1.3.5.2.2.1 | Attend team meeting | 1d | 2015-06-24 | 2015-06-24 | 29d |
| 177 | 1.3.5.2.2.2 | Create status reports | 1d | 2015-06-24 | 2015-06-24 | 29d |
| 178 | 1.3.5.2.2.3 | Create Weekly Report | 1d? | 2015-06-24 | 2015-06-24 | 29d |
| 179 | 1.3.5.2.3 | Resolve communications problems | 1d | 2015-06-24 | 2015-06-24 | 29d |
| 180 | 1.3.5.3 | **Manage quality control** | 1d | 2015-06-24 | 2015-06-24 | 29d |
| 181 | 1.3.5.3.1 | Monitor product quality | 1d | 2015-06-24 | 2015-06-24 | 29d |
| 182 | 1.3.5.3.2 | **Monitor project quality** | 1d | 2015-06-24 | 2015-06-24 | 29d |
| 183 | 1.3.5.3.2.1 | Implement process improvements | 1d | 2015-06-24 | 2015-06-24 | 29d |
| 184 | 1.3.5.4 | **Manage risk** | 1d | 2015-06-24 | 2015-06-24 | 29d |
| 185 | 1.3.5.4.1 | Monitor risks | 1d | 2015-06-24 | 2015-06-24 | 29d |
| 186 | 1.3.5.4.2 | Specify responses | 1d | 2015-06-24 | 2015-06-24 | 29d |
| 187 | 1.3.5.5 | Manage integration | 1d | 2015-06-24 | 2015-06-24 | 29d |

| ID | WBS | Task | Duration | Start | Finish | Predecessors | Total slack |
| --- | --- | --- | --- | --- | --- | --- | --- |
| 188 | 1.4 | **Termination** | 2w | 2015-08-05 | 2015-08-18 | 114 |  |
| 189 | 1.4.1 | **Pre-Closing** | 1d | 2015-08-05 | 2015-08-05 |  | 9d |
| 190 | 1.4.1.1 | Training presentation | 1d | 2015-08-05 | 2015-08-05 |  | 9d |
| 191 | 1.4.2 | **Closing** | 1d | 2015-08-05 | 2015-08-05 |  | 9d |
| 192 | 1.4.2.1 | Prepare for presentation | 1d | 2015-08-05 | 2015-08-05 |  | 9d |
| 193 | 1.4.2.2 | Represent Capstone Project and Completed | 1d | 2015-08-05 | 2015-08-05 |  | 9d |
